# Waleed Project

Schedule from MS Project, 2024-05-20 to 2025-03-20.

## Calendars

- Standard: Mon-Fri 08:00-12:00, 13:00-17:00; Sat-Sun off.

## Schedule

| ID | WBS | Task | Duration | Start | Finish | Predecessors | Total slack | Free slack | Constraint |
| --- | --- | --- | --- | --- | --- | --- | --- | --- | --- |
| 1 | 1 | **Project Digitalize** | 219d | 2024-05-20 | 2025-03-20 |  | 0d |  |  |
| 2 | 1.1 | **Initiation** | 30d | 2024-05-20 | 2024-06-28 |  | 189d |  |  |
| 3 | 1.1.1 | Scope Finalization | 5d | 2024-05-20 | 2024-05-24 |  | 214d |  | finish no earlier than 2024-05-24 |
| 4 | 1.1.2 | **Statement of Work (SOW) sign-off** | 20d | 2024-06-03 | 2024-06-28 |  | 189d |  |  |
| 5 | 1.1.2.1 | Draft SOW | 5d | 2024-06-10 | 2024-06-14 |  | 191d | 0d | start no earlier than 2024-06-10 |
| 6 | 1.1.2.2 | Review SOW by WSIB leadership | 3d | 2024-06-17 | 2024-06-19 | 5 | 193d | 2d |  |
| 7 | 1.1.2.3 | Review SOW with External Vendor | 5d | 2024-06-17 | 2024-06-21 | 5 | 191d | 0d |  |
| 8 | 1.1.2.4 | Legal Review | 5d | 2024-06-17 | 2024-06-21 | 5 | 191d | 0d |  |
| 9 | 1.1.2.5 | Finalize version of SOW | 2d | 2024-06-24 | 2024-06-25 | 6, 7, 8 | 191d | 0d |  |
| 10 | 1.1.2.6 | Sign-off SOW | 1d | 2024-06-26 | 2024-06-26 | 9 | 191d |  |  |
| 11 | 1.1.2.7 | **Stakeholder assessment** | 20d | 2024-06-03 | 2024-06-28 |  | 189d |  |  |
| 12 | 1.1.2.7.1 | Identify stakeholders branches | 10d | 2024-06-03 | 2024-06-14 |  | 189d | 0d | finish no earlier than 2024-06-14 |
| 13 | 1.1.2.7.2 | Coordinate with branches to firm up resources | 10d | 2024-06-17 | 2024-06-28 | 12 | 189d |  |  |
| 14 | 1.2 | **Planning** | 21d | 2024-07-02 | 2024-07-30 |  | 11d | 0d |  |
| 15 | 1.2.1 | **Financial Budget Planning** | 7d | 2024-07-02 | 2024-07-10 |  | 26d |  |  |
| 16 | 1.2.1.1 | Create Finacial Budget Draft | 2d | 2024-07-02 | 2024-07-03 |  | 26d | 0d | start no earlier than 2024-07-02 |
| 17 | 1.2.1.2 | Review with Stakeholder | 2d | 2024-07-04 | 2024-07-05 | 16 | 26d | 0d |  |
| 18 | 1.2.1.3 | Final Sign off from Stakeholders | 1d | 2024-07-08 | 2024-07-08 | 17 | 26d | 0d |  |
| 19 | 1.2.1.4 | Present to Project Governce Committee (PGC) | 1d | 2024-07-09 | 2024-07-09 | 18 | 26d | 0d |  |
| 20 | 1.2.1.5 | Get Approval from PGC | 1d | 2024-07-10 | 2024-07-10 | 19 | 26d |  |  |
| 21 | 1.2.2 | **Risk and Issue Planning** | 2d | 2024-07-08 | 2024-07-09 |  | 27d |  |  |
| 22 | 1.2.2.1 | Start RAID planning | 1d | 2024-07-08 | 2024-07-08 |  | 27d | 0d | start no earlier than 2024-07-08 |
| 23 | 1.2.2.2 | End RAID planning | 1d | 2024-07-09 | 2024-07-09 | 22 | 27d |  | start no earlier than 2024-07-09 |
| 24 | 1.2.3 | **Architecture Checkpoint Planning** | 3d | 2024-07-04 | 2024-07-08 |  | 9d | 0d |  |
| 25 | 1.2.3.1 | Date Alignment with Architecture Governance | 3d | 2024-07-04 | 2024-07-08 |  | 9d |  | start no earlier than 2024-07-04 |

| ID | WBS | Task | Type | Duration | Start | Finish | Predecessors | Total slack | Free slack |
| --- | --- | --- | --- | --- | --- | --- | --- | --- | --- |
| 26 | 1.2.4 | **PMO Gating Planning** |  | 3d | 2024-07-09 | 2024-07-11 | 24 | 9d | 0d |
| 27 | 1.2.4.1 | Date Alignment with PMO Governance |  | 3d | 2024-07-09 | 2024-07-11 |  | 9d |  |
| 28 | 1.2.5 | **Development Sprints Planning** |  | 4d | 2024-07-12 | 2024-07-17 | 26 | 9d | 0d |
| 29 | 1.2.5.1 | Create Product backlog |  | 3d | 2024-07-12 | 2024-07-16 |  | 10d |  |
| 30 | 1.2.5.2 | Develop sprint plan (allocate stories to sprints) |  | 4d | 2024-07-12 | 2024-07-17 |  | 9d |  |
| 31 | 1.2.6 | **QA Planning** |  | 9d | 2024-07-18 | 2024-07-30 |  | 3d |  |
| 32 | 1.2.6.1 | Draft Test Plan Document |  | 1d | 2024-07-18 | 2024-07-18 | 28 | 9d | 0d |
| 33 | 1.2.6.2 | Review Test Plan Document |  | 2d | 2024-07-19 | 2024-07-22 | 32 | 9d | 0d |
| 34 | 1.2.6.3 | Functional Test Plan | manual | 3d | 2024-07-23 | 2024-07-25 | 33 |  |  |
| 35 | 1.2.6.4 | Perfromance Test Plan | manual | 2d | 2024-07-24 | 2024-07-25 | 34 |  |  |
| 36 | 1.2.6.5 | Penetration Test Plan | manual | 4d | 2024-07-25 | 2024-07-30 | 35 |  |  |
| 37 | 1.3 | **Execution** |  | 148d | 2024-08-07 | 2025-02-28 |  | 12d |  |
| 38 | 1.3.1 | **Architecture Design** |  | 60d | 2024-08-07 | 2024-10-29 |  | 12d |  |
| 39 | 1.3.1.1 | **Check point 1 (Conceptual)** |  | 15d | 2024-08-07 | 2024-08-27 |  | 12d |  |
| 40 | 1.3.1.1.1 | Design conceptual architecture and document draft SAD |  | 7d | 2024-08-07 | 2024-08-15 | 14FS+5d | 12d | 0d |
| 41 | 1.3.1.1.2 | Present and get feedback from IT stakeholders |  | 3d | 2024-08-16 | 2024-08-20 | 40 | 12d | 0d |
| 42 | 1.3.1.1.3 | Get approval on SAD |  | 2d | 2024-08-21 | 2024-08-22 | 41 | 150d |  |
| 43 | 1.3.1.1.4 | Prepare CP#1 material |  | 2d | 2024-08-21 | 2024-08-22 | 41 | 12d | 0d |
| 44 | 1.3.1.1.5 | Publish material to get feedback |  | 1d | 2024-08-23 | 2024-08-23 | 43 | 12d | 0d |
| 45 | 1.3.1.1.6 | Attend CP#1 and present material |  | 1d | 2024-08-26 | 2024-08-26 | 44 | 12d | 0d |
| 46 | 1.3.1.1.7 | Accommodate CP#1 feedback |  | 1d | 2024-08-27 | 2024-08-27 | 45 | 12d | 0d |
| 47 | 1.3.1.2 | **Checkpoint 2 (Logical)** |  | 21d | 2024-08-28 | 2024-09-25 |  | 12d | 0d |
| 48 | 1.3.1.2.1 | Design logical architecture and document draft SAD |  | 10d | 2024-08-28 | 2024-09-10 | 46 | 12d | 0d |
| 49 | 1.3.1.2.2 | Present and get feedback from IT stakeholders |  | 3d | 2024-09-11 | 2024-09-13 | 48 | 12d | 0d |
| 50 | 1.3.1.2.3 | Get approval on SAD |  | 3d | 2024-09-16 | 2024-09-18 | 49 | 17d |  |
| 51 | 1.3.1.2.4 | Prepare CP#2 material |  | 5d | 2024-09-16 | 2024-09-20 | 49 | 12d | 0d |
| 52 | 1.3.1.2.5 | Publish material to get feedback |  | 1d | 2024-09-23 | 2024-09-23 | 51 | 12d | 0d |
| 53 | 1.3.1.2.6 | Attend CP#2 and present material |  | 1d | 2024-09-24 | 2024-09-24 | 52 | 12d | 0d |
| 54 | 1.3.1.2.7 | Accommodate CP#2 feedback |  | 1d | 2024-09-25 | 2024-09-25 | 53 | 12d | 0d |

| ID | WBS | Task | Duration | Start | Finish | Predecessors | Total slack | Free slack | Constraint |
| --- | --- | --- | --- | --- | --- | --- | --- | --- | --- |
| 55 | 1.3.1.3 | **Checkpoint 3 (Physical)** | 24d | 2024-09-26 | 2024-10-29 |  | 102d |  |  |
| 56 | 1.3.1.3.1 | Design physical architecture and document draft SAD | 15d | 2024-09-26 | 2024-10-16 | 54 | 102d | 0d | finish no earlier than 2024-08-27 |
| 57 | 1.3.1.3.2 | Present and get feedback from IT stakeholders | 4d | 2024-10-17 | 2024-10-22 | 56 | 102d | 0d |  |
| 58 | 1.3.1.3.3 | Get approval on SAD | 2d | 2024-10-23 | 2024-10-24 | 57 | 105d |  |  |
| 59 | 1.3.1.3.4 | Prepare CP#3 material | 2d | 2024-10-23 | 2024-10-24 | 57 | 102d | 0d |  |
| 60 | 1.3.1.3.5 | Publish material to get feedback | 1d | 2024-10-25 | 2024-10-25 | 59 | 102d | 0d |  |
| 61 | 1.3.1.3.6 | Attend CP#3 and present material | 1d | 2024-10-28 | 2024-10-28 | 60 | 102d | 0d |  |
| 62 | 1.3.1.3.7 | Accommodate CP#3 feedback | 1d | 2024-10-29 | 2024-10-29 | 61 | 102d |  |  |
| 63 | 1.3.2 | **Development** | 50d | 2024-09-26 | 2024-12-04 |  | 12d |  |  |
| 64 | 1.3.2.1 | **Sprint 1** | 10d | 2024-09-26 | 2024-10-09 | 47 | 12d | 0d |  |
| 65 | 1.3.2.1.1 | Sprint 1 code development | 10d | 2024-09-26 | 2024-10-09 |  | 12d |  |  |
| 66 | 1.3.2.1.2 | Code peer review | 10d | 2024-09-26 | 2024-10-09 |  | 12d |  |  |
| 67 | 1.3.2.1.3 | Demo sprint 1 | 10d | 2024-09-26 | 2024-10-09 |  | 12d |  |  |
| 68 | 1.3.2.1.4 | Sprint planning | 10d | 2024-09-26 | 2024-10-09 |  | 12d |  |  |
| 69 | 1.3.2.1.5 | Complete Sprint 1 | 10d | 2024-09-26 | 2024-10-09 |  | 12d |  |  |
| 70 | 1.3.2.2 | **Sprint 2** | 10d | 2024-10-10 | 2024-10-23 | 64 | 12d | 0d |  |
| 71 | 1.3.2.2.1 | Sprint 2 code development | 10d | 2024-10-10 | 2024-10-23 |  | 12d |  |  |
| 72 | 1.3.2.2.2 | Code peer review | 10d | 2024-10-10 | 2024-10-23 |  | 12d |  |  |
| 73 | 1.3.2.2.3 | Demo sprint 2 | 10d | 2024-10-10 | 2024-10-23 |  | 12d |  |  |
| 74 | 1.3.2.2.4 | Sprint planning | 10d | 2024-10-10 | 2024-10-23 |  | 12d |  |  |
| 75 | 1.3.2.2.5 | Complete Sprint 2 | 10d | 2024-10-10 | 2024-10-23 |  | 12d |  |  |
| 76 | 1.3.2.3 | **Sprint 3** | 10d | 2024-10-24 | 2024-11-06 | 70 | 12d | 0d |  |
| 77 | 1.3.2.3.1 | Sprint 3 code development | 10d | 2024-10-24 | 2024-11-06 |  | 12d |  |  |
| 78 | 1.3.2.3.2 | Code peer review | 10d | 2024-10-24 | 2024-11-06 |  | 12d |  |  |
| 79 | 1.3.2.3.3 | Demo sprint 3 | 10d | 2024-10-24 | 2024-11-06 |  | 12d |  |  |
| 80 | 1.3.2.3.4 | Sprint planning | 10d | 2024-10-24 | 2024-11-06 |  | 12d |  |  |
| 81 | 1.3.2.3.5 | Complete Sprint 3 | 10d | 2024-10-24 | 2024-11-06 |  | 12d |  |  |

| ID | WBS | Task | Duration | Start | Finish | Predecessors | Total slack | Free slack |
| --- | --- | --- | --- | --- | --- | --- | --- | --- |
| 82 | 1.3.2.4 | **Sprint 4** | 10d | 2024-11-07 | 2024-11-20 | 76 | 12d | 0d |
| 83 | 1.3.2.4.1 | Sprint 4 code development | 10d | 2024-11-07 | 2024-11-20 |  | 12d |  |
| 84 | 1.3.2.4.2 | Code peer review | 10d | 2024-11-07 | 2024-11-20 |  | 12d |  |
| 85 | 1.3.2.4.3 | Demo sprint 4 | 10d | 2024-11-07 | 2024-11-20 |  | 12d |  |
| 86 | 1.3.2.4.4 | Sprint planning | 10d | 2024-11-07 | 2024-11-20 |  | 12d |  |
| 87 | 1.3.2.4.5 | Complete Sprint 4 | 10d | 2024-11-07 | 2024-11-20 |  | 12d |  |
| 88 | 1.3.2.5 | **Sprint 5** | 10d | 2024-11-21 | 2024-12-04 | 82 | 12d | 0d |
| 89 | 1.3.2.5.1 | Sprint 5 code development | 10d | 2024-11-21 | 2024-12-04 |  | 12d |  |
| 90 | 1.3.2.5.2 | Code peer review | 10d | 2024-11-21 | 2024-12-04 |  | 12d |  |
| 91 | 1.3.2.5.3 | Demo sprint 5 | 10d | 2024-11-21 | 2024-12-04 |  | 12d |  |
| 92 | 1.3.2.5.4 | Sprint planning | 10d | 2024-11-21 | 2024-12-04 |  | 12d |  |
| 93 | 1.3.2.5.5 | Complete Sprint 5 | 10d | 2024-11-21 | 2024-12-04 |  | 12d |  |
| 94 | 1.3.3 | **Testing** | 37d | 2024-12-05 | 2025-01-24 |  | 12d | 0d |
| 95 | 1.3.3.1 | **Functional Testing** | 18d | 2024-12-05 | 2024-12-30 | 88 | 12d |  |
| 96 | 1.3.3.1.1 | Execute Functional Test Cases | 10d | 2024-12-05 | 2024-12-18 |  | 12d | 0d |
| 97 | 1.3.3.1.2 | Resolve Defects | 5d | 2024-12-19 | 2024-12-25 | 96 | 12d | 0d |
| 98 | 1.3.3.1.3 | Retest Functional Test Cases | 3d | 2024-12-26 | 2024-12-30 | 97 | 12d | 0d |
| 99 | 1.3.3.2 | **Regression Testing** | 5d | 2024-12-31 | 2025-01-06 | 98 | 12d |  |
| 100 | 1.3.3.2.1 | Execute Regression Test Cases | 3d | 2024-12-31 | 2025-01-02 |  | 12d | 0d |
| 101 | 1.3.3.2.2 | Resolve Defects | 1d | 2025-01-03 | 2025-01-03 | 100 | 12d | 0d |
| 102 | 1.3.3.2.3 | Retest Regression Test Case | 1d | 2025-01-06 | 2025-01-06 | 101 | 12d | 0d |
| 103 | 1.3.3.3 | **Performance Testing** | 8d | 2025-01-07 | 2025-01-16 | 102 | 12d |  |
| 104 | 1.3.3.3.1 | Develop and Test Performance Test Scripts | 3d | 2025-01-07 | 2025-01-09 |  | 12d | 0d |
| 105 | 1.3.3.3.2 | Execute Performance Test Cases | 2d | 2025-01-10 | 2025-01-13 | 104 | 12d | 0d |
| 106 | 1.3.3.3.3 | Resolve Defects | 2d | 2025-01-14 | 2025-01-15 | 105 | 12d | 0d |
| 107 | 1.3.3.3.4 | Retest Performance Test Case | 1d | 2025-01-16 | 2025-01-16 | 106 | 12d | 0d |

| ID | WBS | Task | Type | Duration | Start | Finish | Predecessors | Total slack | Free slack | Constraint |
| --- | --- | --- | --- | --- | --- | --- | --- | --- | --- | --- |
| 108 | 1.3.3.4 | **Penetration Testing** |  | 6d | 2025-01-17 | 2025-01-24 | 107 | 12d |  |  |
| 109 | 1.3.3.4.1 | Execute Penetration Test Cases |  | 3d | 2025-01-17 | 2025-01-21 |  | 12d | 0d |  |
| 110 | 1.3.3.4.2 | Resolve Defects |  | 2d | 2025-01-22 | 2025-01-23 | 109 | 12d | 0d |  |
| 111 | 1.3.3.4.3 | Retest Penetration Test Case |  | 1d | 2025-01-24 | 2025-01-24 | 110 | 12d | 0d |  |
| 112 | 1.3.4 | **Operationalization** |  | 10d | 2025-01-27 | 2025-02-07 | 111 | 29d |  |  |
| 113 | 1.3.4.1 | Knowledge Transfer to Operations Team |  | 5d | 2025-01-27 | 2025-01-31 |  | 29d | 0d |  |
| 114 | 1.3.4.2 | Develop Implemantation Plan |  | 5d | 2025-02-03 | 2025-02-07 | 113 | 29d |  |  |
| 115 | 1.3.4.3 | Implemantation Dress Reherseals in Pre-Production Environment |  | 5d | 2025-02-03 | 2025-02-07 | 113 | 29d |  |  |
| 116 | 1.3.5 | **Implemantation (Go Live)** |  | 17d | 2025-02-06 | 2025-02-28 |  | 0d |  |  |
| 117 | 1.3.5.1 | Submit and Approve Change Request |  | 5d | 2025-02-06 | 2025-02-12 | 94FS+8d | 12d |  |  |
| 118 | 1.3.5.2 | Execute Implemantation Activities |  | 1d | 2025-02-28 | 2025-02-28 |  | 0d |  | start no earlier than 2025-02-28 |
| 119 | 1.3.5.3 | Go Live | milestone | 0d | 2025-02-28 | 2025-02-28 | 118 | 0d |  |  |
| 120 | 1.4 | **Project Close-Out** |  | 14d | 2025-03-03 | 2025-03-20 | 116 | 0d |  |  |
| 121 | 1.4.1 | Conduct Lesson Learn Sessions |  | 14d | 2025-03-03 | 2025-03-20 |  | 0d |  |  |
| 122 | 1.4.2 | Develop Lesson Learn Report |  | 14d | 2025-03-03 | 2025-03-20 |  | 0d |  |  |
| 123 | 1.4.3 | Draft Project Close-Out Report |  | 14d | 2025-03-03 | 2025-03-20 |  | 0d |  |  |
| 124 | 1.4.4 | Obtain EPMO Gate for Approval |  | 14d | 2025-03-03 | 2025-03-20 |  | 0d |  |  |
| 125 | 1.4.5 | Execute 2 weeks Warranty |  | 14d | 2025-03-03 | 2025-03-20 |  | 0d |  |  |
